# PI Plan V1.1

Schedule from MS Project, 2022-06-30 to 2023-08-14, status date 2019-01-01, costs in ￥.
PIERA

## Calendars

- 标准: Mon-Fri 08:00-12:00, 13:00-17:00; Sat-Sun off.

## Resources

| Resource | Rate |
| --- | --- |
| 项目经理 | 125 |
| 编码 | 125 |
| EPG | 125 |
| 质量保证 | 125 |
| 配置管理 | 125 |
| 需求 | 125 |
| 测试 | 125 |
| 设计 | 125 |
| 采购 | 125 |
| 部门经理 | 125 |
| 培训 | 125 |
| 客户代表 | 125 |
| 项目组成员 | 125 |
| 质量保证主管 | 125 |
| 配置管理主管 | 125 |
| 高级编码 | 125 |
| 高级设计 | 125 |
| 高级测试 | 125 |
| 高级项目经理 | 125 |
| 高级需求分析 | 125 |
| 高级架构师 | 125 |
| 架构师 | 125 |

## Schedule

| ID | WBS | Task | Duration | Start | Finish | Predecessors | Baseline start | Baseline finish | Baseline duration | Total slack | Free slack | Constraint | Resources | Work | Cost | Baseline cost |
| --- | --- | --- | --- | --- | --- | --- | --- | --- | --- | --- | --- | --- | --- | --- | --- | --- |
| 1 | 1 | **赛事运营支持系统** | 293d? | 2022-06-30 08:00 | 2023-08-14 17:00 |  | 2008-06-20 08:00 | 2009-04-20 12:00 | 216.5d? | 0d |  |  |  | 2206h | 275,750 | 385,203.25 |
| 2 | 1.1 | **项目立项** | 2d | 2023-04-07 08:00 | 2023-04-10 17:00 |  | 2008-06-20 08:00 | 2008-06-30 17:00 | 7d? | 0d |  |  |  | 58h | 7,250 | 1,252.42 |
| 3 | 1.1.1 | 了解项目情况,获得初步需求 | 1d | 2023-04-07 08:00 | 2023-04-07 17:00 |  | 2008-06-20 08:00 | 2008-06-20 17:00 | 1d? | 0d |  | start no earlier than 2023-04-07 08:00 | 项目经理; 高级设计; 测试; 高级编码 | 32h | 4,000 | 200 |
| 4 | 1.1.2 | 项目初步估算 | 0.25d | 2023-04-10 08:00 | 2023-04-10 10:00 | 3 | 2008-06-23 08:00 | 2008-06-23 17:00 | 1d? | 0d |  |  | 项目经理; 高级编码; 高级测试; 高级设计 | 8h | 1,000 | 200 |
| 5 | 1.1.3 | 项目组织架构，章程制定、资源、职责，干系人RACI整理 | 0.25d | 2023-04-10 10:00 | 2023-04-10 12:00 | 4 | 2008-06-25 08:00 | 2008-06-25 17:00 | 1d? | 0d |  |  | 项目经理 | 2h | 250 | 200 |
| 6 | 1.1.4 | 召开项目立项会议 | 0.25d | 2023-04-10 13:00 | 2023-04-10 15:00 | 5 | 2008-06-27 08:00 | 2008-06-27 17:00 | 1d? | 90.25d |  |  | 项目经理; 设计; 需求; 测试; 配置管理; 高级编码 | 12h | 1,500 | 52.42 |
| 7 | 1.1.5 | 编写《项目立项报告》 | 0.5d | 2023-04-10 13:00 | 2023-04-10 17:00 | 5 |  |  |  | 0d |  |  | 项目经理 | 4h | 500 |  |
| 9 | 1.2 | **项目计划** | 14.5d | 2023-04-11 08:00 | 2023-05-01 12:00 |  | 2008-07-01 08:00 | 2008-08-13 17:00 | 32d? | 0d |  |  |  | 338h | 42,250 | 23,800 |
| 10 | 1.2.1 | **项目估算** | 4d | 2023-04-11 08:00 | 2023-04-14 17:00 |  |  |  |  | 0d |  |  |  | 100h | 12,500 |  |
| 11 | 1.2.1.1 | 确定软件生存周期,初步制定QA,CM计划 | 1d | 2023-04-11 08:00 | 2023-04-11 17:00 | 7 | 2008-07-01 08:00 | 2008-07-01 17:00 | 1d? | 0d |  |  | 项目经理; 配置管理; 质量保证 | 40h | 5,000 | 400 |
| 12 | 1.2.1.2 | EPG指导项目经理编写《项目定义过程》 | 0.5d | 2023-04-12 08:00 | 2023-04-12 12:00 | 11 | 2008-07-02 08:00 | 2008-07-02 17:00 | 1d? | 0d |  |  | 项目经理; EPG | 8h | 1,000 | 400 |
| 13 | 1.2.1.3 | 根据初步，进行WBS分解 | 1d | 2023-04-12 13:00 | 2023-04-13 12:00 | 12 |  |  |  | 0d |  |  | 项目经理; 高级编码; 设计 | 24h | 3,000 |  |
| 14 | 1.2.1.4 | 估算项目的规模,工作量,成本,形成进度计划<项目估算>和项目预算 | 1d | 2023-04-13 13:00 | 2023-04-14 12:00 | 13 |  |  |  | 0d |  |  | 项目经理; 高级编码; 设计 | 24h | 3,000 |  |
| 15 | 1.2.1.5 | 依据<风险检查表>进行风险识别,初步形成计划 | 0.5d | 2023-04-14 13:00 | 2023-04-14 17:00 | 14 |  |  |  | 0d |  |  | 项目经理 | 4h | 500 |  |
| 16 | 1.2.2 | **项目计划** | 8d | 2023-04-17 08:00 | 2023-04-26 17:00 |  | 2008-07-04 08:00 | 2008-08-13 17:00 | 29d? | 0d |  |  |  | 192h | 24,000 | 22,550 |
| 17 | 1.2.2.1 | **项目经理制定项目计划** | 4d | 2023-04-17 08:00 | 2023-04-20 17:00 |  | 2008-07-04 08:00 | 2008-07-10 17:00 | 5d? | 0d |  |  |  | 32h | 4,000 | 1,600 |
| 18 | 1.2.2.1.1 | 完善项目进度计划 | 1d | 2023-04-17 08:00 | 2023-04-17 17:00 | 15 | 2008-07-04 08:00 | 2008-07-04 17:00 | 1d? | 0d |  |  | 项目经理 | 8h | 1,000 | 400 |
| 19 | 1.2.2.1.2 | 编写《项目计划书》 | 2d | 2023-04-18 08:00 | 2023-04-19 17:00 | 18 | 2008-07-07 08:00 | 2008-07-07 17:00 | 1d? | 0d |  |  | 项目经理 | 16h | 2,000 | 400 |
| 20 | 1.2.2.1.3 | 编写<度量计划> | 1d | 2023-04-20 08:00 | 2023-04-20 17:00 | 19 |  |  |  | 0d |  |  | 项目经理 | 8h | 1,000 |  |
| 21 | 1.2.2.2 | **制定从属计划** | 1d | 2023-04-17 08:00 | 2023-04-17 17:00 |  | 2008-07-11 08:00 | 2008-07-14 17:00 | 2d? | 3d |  |  |  | 40h | 5,000 | 6,900 |
| 22 | 1.2.2.2.1 | 编写需求调研计划 | 1d | 2023-04-17 08:00 | 2023-04-17 17:00 | 15 |  |  |  | 3d |  |  | 需求 | 8h | 1,000 |  |
| 23 | 1.2.2.2.2 | 完善质量保证计划(QA) | 1d | 2023-04-17 08:00 | 2023-04-17 17:00 | 15 |  |  |  | 3d |  |  | 质量保证主管 | 8h | 1,000 |  |
| 24 | 1.2.2.2.3 | 完善配置管理计划(CM) | 1d | 2023-04-17 08:00 | 2023-04-17 17:00 | 15 |  |  |  | 3d |  |  | 配置管理 | 8h | 1,000 |  |
| 25 | 1.2.2.2.4 | 编写测试计划 | 1d | 2023-04-17 08:00 | 2023-04-17 17:00 | 15 |  |  |  | 3d |  |  | 高级测试 | 8h | 1,000 |  |
| 26 | 1.2.2.2.5 | 编写<培训计划> | 1d | 2023-04-17 08:00 | 2023-04-17 17:00 | 15 |  |  |  | 3d | 0d |  | 培训 | 8h | 1,000 |  |
| 27 | 1.2.2.3 | 项目计划书,从属计划及项目定义过程进行评审 | 1d | 2023-04-21 08:00 | 2023-04-21 17:00 | 21, 17 | 2008-07-14 08:00 | 2008-07-14 17:00 | 1d? | 0d |  |  | 配置管理; 测试; 项目经理; 需求; 设计; 高级编码 | 48h | 6,000 | 3,450 |
| 28 | 1.2.2.4 | 评审中发现的缺陷进行修正 | 1d | 2023-04-24 08:00 | 2023-04-24 17:00 | 27 |  |  |  | 0d |  |  | 需求; 设计; 测试; 配置管理; EPG; 项目经理; 高级编码 | 56h | 7,000 |  |
| 29 | 1.2.2.5 | 项目计划书的评审与发布 | 1d | 2023-04-25 08:00 | 2023-04-25 17:00 | 28 |  |  |  | 0d |  |  | 项目经理 | 8h | 1,000 |  |
| 30 | 1.2.2.6 | 调研计划发给客户 | 1d | 2023-04-26 08:00 | 2023-04-26 17:00 | 29 |  |  |  | 0d |  |  | 项目经理 | 8h | 1,000 |  |

Notes:
- 5: 产出<项目章程>
- 6: 产出<会议记录>

| ID | WBS | Task | Duration | Start | Finish | Predecessors | Baseline start | Baseline finish | Baseline duration | Total slack | Free slack | Resources | Work | Cost | Baseline cost |
| --- | --- | --- | --- | --- | --- | --- | --- | --- | --- | --- | --- | --- | --- | --- | --- |
| 31 | 1.2.3 | **建立计划基线** | 2d | 2023-04-27 08:00 | 2023-04-28 17:00 | 21 | 2008-07-15 08:00 | 2008-07-17 17:00 | 3d? | 0d |  |  | 20h | 2,500 |  |
| 32 | 1.2.3.1 | 计划基线建立申请,填写《基线建立申请》 | 0.5d | 2023-04-27 08:00 | 2023-04-27 12:00 | 30 | 2008-07-15 08:00 | 2008-07-15 17:00 | 1d? | 0d |  | 配置管理 | 4h | 500 |  |
| 33 | 1.2.3.2 | QA和CM对配置库进行功能审计和物理审计 | 0.5d | 2023-04-27 13:00 | 2023-04-27 17:00 | 32 |  |  |  | 0d |  | 配置管理; 质量保证 | 8h | 1,000 |  |
| 34 | 1.2.3.3 | 配置管理在配置库中建立计划基线 | 0.5d | 2023-04-28 08:00 | 2023-04-28 12:00 | 33 | 2008-07-16 08:00 | 2008-07-16 17:00 | 1d? | 0d |  | 配置管理 | 4h | 500 |  |
| 35 | 1.2.3.4 | 填写计划基线《发布报告》 | 0.5d | 2023-04-28 13:00 | 2023-04-28 17:00 | 34 | 2008-07-17 08:00 | 2008-07-17 17:00 | 1d? | 0d |  | 配置管理 | 4h | 500 |  |
| 36 | 1.2.4 | **召开项目培训** | 1.5d | 2023-04-18 08:00 | 2023-04-19 12:00 |  | 2008-07-18 08:00 | 2008-07-21 17:00 | 2d? | 83.5d |  |  | 12h | 1,500 | 800 |
| 37 | 1.2.4.1 | 依据《项目培训计划》组织培训 | 0.5d | 2023-04-18 08:00 | 2023-04-18 12:00 | 26 | 2008-07-18 08:00 | 2008-07-18 17:00 | 1d? | 83.5d | 0d | 培训 | 4h | 500 | 400 |
| 38 | 1.2.4.2 | 编写培训反馈记录 | 1d | 2023-04-18 13:00 | 2023-04-19 12:00 | 37 | 2008-07-21 08:00 | 2008-07-21 17:00 | 1d? | 83.5d |  | 培训 | 8h | 1,000 | 400 |
| 39 | 1.2.5 | **项目计划里程碑** | 0.5d | 2023-05-01 08:00 | 2023-05-01 12:00 |  | 2008-07-18 08:00 | 2008-07-23 17:00 | 4d? | 0d |  |  | 14h | 1,750 | 6,050 |
| 40 | 1.2.5.1 | 开策划里程碑会议,填写《策划里程碑状态报告》 | 0.25d | 2023-05-01 08:00 | 2023-05-01 10:00 | 31 | 2008-07-18 08:00 | 2008-07-18 17:00 | 1d? | 0d |  | 项目经理; 需求; 设计; 测试; 配置管理; 高级编码 | 12h | 1,500 | 5,050 |
| 41 | 1.2.5.2 | 项目经理根据里程碑数据进行阶段性调整 | 0.25d | 2023-05-01 10:00 | 2023-05-01 12:00 | 40 | 2008-07-21 08:00 | 2008-07-21 17:00 | 1d? | 0d |  | 项目经理 | 2h | 250 | 200 |
| 43 | 1.3 | **需求开发** | 13d | 2023-05-01 13:00 | 2023-05-18 12:00 |  | 2008-07-18 08:00 | 2008-08-14 09:36 | 19.2d? | 0d |  |  | 286h | 35,750 | 74,742.5 |
| 44 | 1.3.1 | **需求调研** | 1.5d | 2023-05-01 13:00 | 2023-05-02 17:00 |  | 2008-07-18 08:00 | 2008-07-23 17:00 | 4d? | 0d |  |  | 12h | 1,500 | 28,800 |
| 45 | 1.3.1.1 | 按照《需求调研计划》进行调研，形成调研记录 | 1d | 2023-05-01 13:00 | 2023-05-02 12:00 | 39 | 2008-07-18 08:00 | 2008-07-18 17:00 | 1d? | 0d |  | 需求 | 8h | 1,000 | 16,800 |
| 46 | 1.3.1.2 | 编写《需求跟踪矩阵》填写原始需求 | 0.5d | 2023-05-02 13:00 | 2023-05-02 17:00 | 45 | 2008-07-22 08:00 | 2008-07-22 17:00 | 1d? | 0d |  | 需求 | 4h | 500 | 2,800 |
| 47 | 1.3.2 | **需求分析** | 9.5d | 2023-05-03 08:00 | 2023-05-16 12:00 | 44 | 2008-07-24 08:00 | 2008-07-30 17:00 | 5d? | 0d |  |  | 244h | 30,500 | 30,062.5 |
| 48 | 1.3.2.1 | 分析需求,编写《用户需求说明书》 | 2d | 2023-05-03 08:00 | 2023-05-04 17:00 |  | 2008-07-24 08:00 | 2008-07-24 17:00 | 1d? | 0d |  | 需求 | 16h | 2,000 | 5,600 |
| 49 | 1.3.2.2 | 评审<用户需求说明书>,记录并修改缺陷 | 0.5d | 2023-05-05 08:00 | 2023-05-05 12:00 | 48 |  |  |  | 0d |  | 项目经理; 需求; 设计; 测试; 配置管理; 高级编码 | 24h | 3,000 |  |
| 50 | 1.3.2.3 | QA检查<用户需求说明书>并记录不符合项并修改 | 0.5d | 2023-05-05 13:00 | 2023-05-05 17:00 | 49 |  |  |  | 0d |  | 配置管理; 质量保证 | 8h | 1,000 |  |
| 51 | 1.3.2.4 | <用户需求说明书>提交客户确认 | 0.5d | 2023-05-08 08:00 | 2023-05-08 12:00 | 50 |  |  |  | 0d |  | 项目经理; 需求 | 8h | 1,000 |  |
| 52 | 1.3.2.5 | 编写《产品需求说明书》 | 2d | 2023-05-08 13:00 | 2023-05-10 12:00 | 51 | 2008-07-28 08:00 | 2008-07-28 17:00 | 1d? | 0d |  | 需求 | 16h | 2,000 | 19,600 |
| 53 | 1.3.2.6 | 评审<产品需求说明书>,记录并修改缺陷 | 0.5d | 2023-05-10 13:00 | 2023-05-10 17:00 | 52 |  |  |  | 0d |  | 项目经理; 需求; 设计; 测试; 配置管理; 高级编码 | 24h | 3,000 |  |
| 54 | 1.3.2.7 | 完善<项目估算>和《需求跟踪矩阵》 | 1d | 2023-05-11 08:00 | 2023-05-11 17:00 | 53 |  |  |  | 2d | 0d | 高级编码; 设计; 项目经理 | 24h | 3,000 |  |
| 55 | 1.3.2.8 | 完善编写《测试计划》 | 0.5d | 2023-05-12 08:00 | 2023-05-12 12:00 | 54 |  |  |  | 2d | 0d | 测试 | 4h | 500 |  |
| 56 | 1.3.2.9 | 评审《测试计划》并发布 | 1d | 2023-05-12 13:00 | 2023-05-15 12:00 | 55 |  |  |  | 2d | 0d | 测试; 项目经理 | 16h | 2,000 |  |
| 57 | 1.3.2.10 | 完善<项目进度计划>，完善<项目计划书> | 1d | 2023-05-15 13:00 | 2023-05-16 12:00 | 56 |  |  |  | 2d |  | 项目经理 | 8h | 1,000 |  |
| 58 | 1.3.2.11 | 依据《产品需求说明书》编写《系统测试用例》 | 1d | 2023-05-11 08:00 | 2023-05-11 17:00 | 53 | 2008-07-29 08:00 | 2008-07-29 17:00 | 1d? | 0d |  | 项目经理; 需求; 测试 | 24h | 3,000 | 1,262.5 |
| 59 | 1.3.2.12 | QA检查《产品需求说明书》和《系统测试用例》 | 1d | 2023-05-12 08:00 | 2023-05-12 17:00 | 58 | 2008-07-30 08:00 | 2008-07-30 17:00 | 1d? | 0d |  | 需求; 测试; 质量保证 | 24h | 3,000 | 800 |
| 60 | 1.3.2.13 | 评审<系统测试用例>记录并修改缺陷 | 1d | 2023-05-15 08:00 | 2023-05-15 17:00 | 59 |  |  |  | 0d |  | 项目经理; 需求; 设计; 测试; 配置管理; 高级编码 | 48h | 6,000 |  |

| ID | WBS | Task | Duration | Start | Finish | Predecessors | Baseline start | Baseline finish | Baseline duration | Total slack | Constraint | Resources | Work | Cost | Baseline cost |
| --- | --- | --- | --- | --- | --- | --- | --- | --- | --- | --- | --- | --- | --- | --- | --- |
| 61 | 1.3.3 | **建立需求基线** | 2d | 2023-05-16 08:00 | 2023-05-17 17:00 | 60 | 2008-08-07 08:00 | 2008-08-11 09:36 | 2.2d? | 0d |  |  | 20h | 2,500 | 2,080 |
| 62 | 1.3.3.1 | 需求基线建立申请,填写《基线建立申请》 | 0.5d | 2023-05-16 08:00 | 2023-05-16 12:00 |  | 2008-08-07 08:00 | 2008-08-07 17:00 | 1d? | 0d |  | 配置管理 | 4h | 500 | 2,000 |
| 63 | 1.3.3.2 | QA和CM对配置库进行功能和物理审计 | 0.5d | 2023-05-16 13:00 | 2023-05-16 17:00 | 62 |  |  |  | 0d |  | 配置管理; 质量保证 | 8h | 1,000 |  |
| 64 | 1.3.3.3 | 配置管理在配置库中建立需求基线 | 0.5d | 2023-05-17 08:00 | 2023-05-17 12:00 | 63 | 2008-08-08 08:00 | 2008-08-08 17:00 | 1d? | 0d |  | 配置管理 | 4h | 500 |  |
| 65 | 1.3.3.4 | 填写需求基线《发布报告》 | 0.5d | 2023-05-17 13:00 | 2023-05-17 17:00 | 64 | 2008-08-11 08:00 | 2008-08-11 09:36 | 0.2d | 0d |  | 配置管理 | 4h | 500 | 80 |
| 66 | 1.3.4 | **需求里程碑** | 0.5d | 2023-05-18 08:00 | 2023-05-18 12:00 | 61 | 2008-08-11 09:36 | 2008-08-14 09:36 | 3d? | 0d |  |  | 10h | 1,250 | 5,850 |
| 67 | 1.3.4.1 | 需求里程碑会议,填写《需求里程碑状态报告》 | 0.25d | 2023-05-18 08:00 | 2023-05-18 10:00 | 65 | 2008-08-11 09:36 | 2008-08-12 09:36 | 1d? | 0d |  | 项目经理; 需求; 测试; 配置管理 | 8h | 1,000 | 5,050 |
| 68 | 1.3.4.2 | 项目经理对项目计划进行阶段性调整，完善《需求跟踪矩阵》 | 0.25d | 2023-05-18 10:00 | 2023-05-18 12:00 | 67 | 2008-08-13 09:36 | 2008-08-14 09:36 | 1d? | 0d |  | 项目经理 | 2h | 250 | 400 |
| 70 | 1.4 | **系统设计** | 14d? | 2023-05-18 13:00 | 2023-06-07 12:00 | 43 | 2008-08-11 09:36 | 2008-08-21 14:36 | 8.5d? | 0d |  |  | 298h | 37,250 | 36,850 |
| 71 | 1.4.1 | **决策分析** | 1.25d | 2023-05-18 13:00 | 2023-05-19 15:00 |  | 2008-08-11 09:36 | 2008-08-12 14:36 | 1.5d? | 0d |  |  | 34h | 4,250 | 3,400 |
| 72 | 1.4.1.1 | 完善技术方案,必要情况进行决策分析形成《决策分析报告》 | 1d | 2023-05-18 13:00 | 2023-05-19 12:00 | 65 | 2008-08-11 09:36 | 2008-08-11 14:36 | 0.5d? | 0d |  | 设计; 项目经理; 需求; 高级编码 | 32h | 4,000 | 200 |
| 73 | 1.4.1.2 | 技术解决方案制定，购买复用分析 | 0.25d | 2023-05-19 13:00 | 2023-05-19 15:00 | 72 |  |  |  | 0d |  | 架构师 | 2h | 250 |  |
| 74 | 1.4.2 | **系统概要设计** | 3.25d | 2023-05-19 15:00 | 2023-05-24 17:00 | 71 | 2008-08-12 14:36 | 2008-08-21 14:36 | 7d? | 0.25d |  |  | 56h | 7,000 | 33,450 |
| 75 | 1.4.2.1 | 进行总体设计,编写《概要设计书》 | 2d | 2023-05-22 08:00 | 2023-05-23 17:00 | 73 | 2008-08-12 14:36 | 2008-08-13 14:36 | 1d? | 0d |  | 架构师 | 16h | 2,000 | 22,400 |
| 76 | 1.4.2.2 | 评审<概要设计>,记录缺陷并修正 | 1d | 2023-05-24 08:00 | 2023-05-24 17:00 | 75 | 2008-08-13 14:36 | 2008-08-14 14:36 | 1d? | 0d |  | 项目经理; 需求; 设计; 架构师 | 32h | 4,000 | 250 |
| 77 | 1.4.2.3 | 数据库初步设计 | 1d | 2023-05-19 15:00 | 2023-05-22 15:00 |  |  |  |  | 11.75d |  | 架构师 | 8h | 1,000 |  |
| 78 | 1.4.3 | **系统详细设计** | 5d? | 2023-05-25 08:00 | 2023-05-31 17:00 | 76 | 2008-08-25 09:36 | 2008-08-29 09:36 | 4d? | 0d |  |  | 120h | 15,000 | 19,550 |
| 79 | 1.4.3.1 | 依据《概要设计说明书》编写《详细设计说明书》 | 3d | 2023-05-25 08:00 | 2023-05-29 17:00 |  | 2008-08-25 09:36 | 2008-08-26 09:36 | 1d? | 0d |  | 架构师 | 24h | 3,000 | 14,000 |
| 80 | 1.4.3.2 | 评审<详细设计>,记录缺陷并修正 | 1d | 2023-05-30 08:00 | 2023-05-30 17:00 | 79 | 2008-08-26 09:36 | 2008-08-27 09:36 | 1d? | 0d |  | 项目经理; 设计; 需求; 编码; 架构师 | 40h | 5,000 | 750 |
| 81 | 1.4.3.3 | QA检查<详细设计>记录不符合项并修正 | 1d | 2023-05-31 08:00 | 2023-05-31 17:00 | 80 |  |  |  | 0d |  | 设计; 编码 | 16h | 2,000 |  |
| 82 | 1.4.3.4 | 完善《需求跟踪矩阵》 | 1d? | 2023-05-25 08:00 | 2023-05-25 17:00 |  |  |  |  | 4d |  | 设计 | 8h | 1,000 |  |
| 83 | 1.4.3.5 | 依据《详细设计说明书》编制《单元测试计划》 | 1d | 2023-05-31 08:00 | 2023-05-31 17:00 |  |  |  |  | 0d | start no earlier than 2023-05-31 08:00 | 设计; 编码 | 16h | 2,000 |  |
| 84 | 1.4.3.6 | 依据《详细设计说明书》《单元测试计划》编制《单元测试用例》 | 1d | 2023-05-25 08:00 | 2023-05-25 17:00 |  |  |  |  | 4d |  | 编码; 设计 | 16h | 2,000 |  |
| 85 | 1.4.4 | 编写<交付件一览表>初稿 | 1d | 2023-06-01 08:00 | 2023-06-01 17:00 | 78 |  |  |  | 0d |  | 设计 | 8h | 1,000 |  |
| 86 | 1.4.5 | 编写<用户操作手册>初稿 | 1d | 2023-06-02 08:00 | 2023-06-02 17:00 | 85 |  |  |  | 0d |  | 设计 | 8h | 1,000 |  |
| 87 | 1.4.6 | 编写<接口列表> | 0.5d | 2023-06-05 08:00 | 2023-06-05 12:00 | 86 |  |  |  | 0d |  | 设计 | 4h | 500 |  |
| 88 | 1.4.7 | 编写<接口定义书> | 1d | 2023-06-05 13:00 | 2023-06-06 12:00 | 87 |  |  |  | 0d |  | 项目经理; 设计 | 16h | 2,000 |  |
| 89 | 1.4.8 | 编写<产品集成计划> | 1d | 2023-06-06 13:00 | 2023-06-07 12:00 | 88 |  |  |  | 0d |  | 项目经理; 设计 | 16h | 2,000 |  |

| ID | WBS | Task | Duration | Start | Finish | Predecessors | Baseline start | Baseline finish | Baseline duration | Total slack | Free slack | Constraint | Resources | Work | Cost | Baseline cost |
| --- | --- | --- | --- | --- | --- | --- | --- | --- | --- | --- | --- | --- | --- | --- | --- | --- |
| 90 | 1.4.9 | **建立设计基线** | 2d | 2023-06-01 08:00 | 2023-06-02 17:00 |  | 2008-08-29 09:36 | 2008-09-01 09:36 | 1d? | 2d |  |  |  | 20h | 2,500 | 2,000 |
| 91 | 1.4.9.1 | 设计基线建立申请,填写《基线建立申请》 | 0.5d | 2023-06-01 08:00 | 2023-06-01 12:00 | 78 | 2008-08-29 09:36 | 2008-09-01 09:36 | 1d? | 2d | 0d |  | 配置管理 | 4h | 500 | 2,000 |
| 92 | 1.4.9.2 | QA和CM对配置库进行功能审计 | 0.5d | 2023-06-01 13:00 | 2023-06-01 17:00 | 91 |  |  |  | 2d | 0d |  | 配置管理; 质量保证 | 8h | 1,000 |  |
| 93 | 1.4.9.3 | 配置管理在配置库中建立设计基线 | 0.5d | 2023-06-02 08:00 | 2023-06-02 12:00 | 92 | 2008-08-29 09:36 | 2008-09-01 09:36 | 1d? | 2d | 0d |  | 配置管理 | 4h | 500 |  |
| 94 | 1.4.9.4 | 填写设计基线《发布报告》 | 0.5d | 2023-06-02 13:00 | 2023-06-02 17:00 | 93 | 2008-08-29 09:36 | 2008-08-29 09:36 | 0d | 2d | 0d |  | 配置管理 | 4h | 500 |  |
| 95 | 1.4.10 | **设计里程碑** | 0.5d | 2023-06-05 08:00 | 2023-06-05 12:00 |  | 2008-09-01 09:36 | 2008-09-03 09:36 | 2d? | 2d |  |  |  | 16h | 2,000 | 1,450 |
| 96 | 1.4.10.1 | 召开设计里程碑评审会议,填写《设计里程碑状态报告》 | 0.25d | 2023-06-05 08:00 | 2023-06-05 10:00 | 94 | 2008-09-01 09:36 | 2008-09-02 09:36 | 1d? | 2d | 0d |  | 项目经理; 设计; 需求; 测试; 高级编码; 配置管理; 质量保证 | 14h | 1,750 | 650 |
| 97 | 1.4.10.2 | 项目经理对项目计划进行阶段性调整，完善《需求跟踪矩阵》 | 0.25d | 2023-06-05 10:00 | 2023-06-05 12:00 | 96 | 2008-09-01 09:36 | 2008-09-02 09:36 | 1d? | 2d |  |  | 项目经理 | 2h | 250 | 400 |
| 99 | 1.5 | **系统编码实现** | 26.5d | 2023-06-07 13:00 | 2023-07-13 17:00 | 70 | 2008-09-01 09:36 | 2009-03-02 14:36 | 130.5d? | 0d |  |  |  | 686h | 85,750 | 7,262.5 |
| 100 | 1.5.1 | **编码** | 17d | 2023-06-07 13:00 | 2023-06-30 12:00 |  | 2008-09-01 09:36 | 2008-09-04 11:36 | 3.25d? | 0d |  |  |  | 472h | 59,000 | 2,062.5 |
| 101 | 1.5.1.1 | 运营管理系统升级 | 6d | 2023-06-07 13:00 | 2023-06-15 12:00 | 81 | 2008-09-01 09:36 | 2008-09-02 09:36 | 1d? | 0d |  | start no earlier than 2023-06-05 08:00 | 高级编码; 架构师 | 96h | 12,000 | 500 |
| 102 | 1.5.1.2 | 业务协作门户升级 | 7d | 2023-06-07 13:00 | 2023-06-16 12:00 | 81 |  |  |  | 10d |  |  | 高级编码; 编码 | 112h | 14,000 |  |
| 103 | 1.5.1.3 | 移动端监控应用系统建设 | 11d | 2023-06-15 13:00 | 2023-06-30 12:00 | 101 |  |  |  | 0d |  |  | 编码; 设计; 架构师 | 264h | 33,000 |  |
| 104 | 1.5.2 | **代码审查（编码期间完善，日期为截止日期）** | 2d | 2023-06-30 13:00 | 2023-07-04 12:00 |  |  |  |  | 28.5d |  |  |  | 28h | 3,500 |  |
| 105 | 1.5.2.1 | 完善<产品集成计划>（编码期间完善） | 0.5d | 2023-06-30 13:00 | 2023-06-30 17:00 | 103 |  |  |  | 28.5d | 0d |  | 高级编码 | 8h | 1,000 |  |
| 106 | 1.5.2.2 | 完善<单元测试计划>（编码期间完善） | 0.5d | 2023-07-03 08:00 | 2023-07-03 12:00 | 105 |  |  |  | 28.5d | 0d |  | 高级编码 | 8h | 1,000 |  |
| 107 | 1.5.2.3 | 核心代码交叉走查（编码期间完善） | 0.5d | 2023-07-03 13:00 | 2023-07-03 17:00 | 106 | 2008-09-04 09:36 | 2008-09-04 11:36 | 0.25d | 28.5d | 0d |  | 高级编码 | 4h | 500 | 562.5 |
| 108 | 1.5.2.4 | 完善单元测试用例（编码期间完善） | 0.5d | 2023-07-04 08:00 | 2023-07-04 12:00 | 107 |  |  |  | 28.5d | 0d |  | 高级编码 | 8h | 1,000 |  |
| 109 | 1.5.3 | **编写单元测试用例（编码期间完善，日期为截止日期）** | 1d | 2023-07-04 13:00 | 2023-07-05 12:00 |  |  |  |  | 28.5d |  |  |  | 16h | 2,000 |  |
| 110 | 1.5.3.1 | 评审＜单元测试用例＞，记录缺陷并修正 | 0.5d | 2023-07-04 13:00 | 2023-07-04 17:00 | 108 |  |  |  | 28.5d | 0d |  | 高级编码 | 8h | 1,000 |  |
| 111 | 1.5.3.2 | QA检查＜单元测试用例＞记录不符合项并修正 | 0.5d | 2023-07-05 08:00 | 2023-07-05 12:00 | 110 |  |  |  | 28.5d |  |  | 高级编码 | 8h | 1,000 |  |
| 112 | 1.5.4 | **执行单元测试** | 4.5d | 2023-06-30 13:00 | 2023-07-06 17:00 |  | 2008-09-04 14:36 | 2008-09-12 14:36 | 6d | 0d |  |  |  | 72h | 9,000 | 1,600 |
| 113 | 1.5.4.1 | 依据《单元测试用例》执行单元测试 | 2d | 2023-06-30 13:00 | 2023-07-04 12:00 | 100 | 2008-09-04 14:36 | 2008-09-05 14:36 | 1d | 0d |  |  | 高级编码 | 32h | 4,000 |  |
| 114 | 1.5.4.2 | 单元测试执行过程中发现的缺陷记录《单元测试BUG记录》 | 0.5d | 2023-07-04 13:00 | 2023-07-04 17:00 | 113 | 2008-09-09 14:36 | 2008-09-10 14:36 | 1d | 0d |  |  | 高级编码 | 8h | 1,000 |  |
| 115 | 1.5.4.3 | 编写《单元测试报告》 | 0.5d | 2023-07-05 08:00 | 2023-07-05 12:00 | 114 | 2008-09-10 14:36 | 2008-09-11 14:36 | 1d | 0d |  |  | 高级编码 | 8h | 1,000 |  |
| 116 | 1.5.4.4 | QA检查《单元测试报告》和《单元测试BUG记录》 | 0.5d | 2023-07-05 13:00 | 2023-07-05 17:00 | 115 | 2008-09-11 14:36 | 2008-09-12 14:36 | 1d | 0d |  |  | 高级编码; 质量保证 | 8h | 1,000 | 1,600 |
| 117 | 1.5.4.5 | 完善<接口定义书> | 0.5d | 2023-07-06 08:00 | 2023-07-06 12:00 | 87, 116 |  |  |  | 0d |  |  | 项目经理; 设计 | 8h | 1,000 |  |
| 118 | 1.5.4.6 | 接口进行评审 | 0.5d | 2023-07-06 13:00 | 2023-07-06 17:00 | 87, 117 |  |  |  | 0d |  |  | 项目经理; 设计 | 8h | 1,000 |  |

| ID | WBS | Task | Type | Duration | Start | Finish | Predecessors | Baseline start | Baseline finish | Baseline duration | Total slack | Free slack | Resources | Work | Cost | Baseline cost |
| --- | --- | --- | --- | --- | --- | --- | --- | --- | --- | --- | --- | --- | --- | --- | --- | --- |
| 119 | 1.5.5 | **产品集成** |  | 3d | 2023-07-07 08:00 | 2023-07-11 17:00 |  |  |  |  | 0d |  |  | 48h | 6,000 |  |
| 120 | 1.5.5.1 | 搭建集成环境 |  | 0.5d | 2023-07-07 08:00 | 2023-07-07 12:00 | 118 |  |  |  | 0d |  | 高级编码 | 8h | 1,000 |  |
| 121 | 1.5.5.2 | 依据<产品集成检查列表>,<接口列表>进行检查 |  | 0.5d | 2023-07-07 13:00 | 2023-07-07 17:00 | 120 |  |  |  | 22d | 0d | 高级编码 | 8h | 1,000 |  |
| 122 | 1.5.5.3 | 进行产品集成,模块集成过程中编写<产品集成模块核查报告> |  | 0.5d | 2023-07-10 08:00 | 2023-07-10 12:00 | 121 |  |  |  | 22d | 0d | 高级编码 | 8h | 1,000 |  |
| 123 | 1.5.5.4 | 准备完毕进行产品集成，进行集成测试 |  | 0.5d | 2023-07-10 13:00 | 2023-07-10 17:00 | 122 |  |  |  | 22d | 0d | 高级编码 | 8h | 1,000 |  |
| 124 | 1.5.5.5 | 问题修复处理 |  | 0.5d | 2023-07-11 08:00 | 2023-07-11 12:00 | 123 |  |  |  | 22d | 0d | 高级编码 | 8h | 1,000 |  |
| 125 | 1.5.5.6 | 编写《产品集成阶段报告》 |  | 0.5d | 2023-07-11 13:00 | 2023-07-11 17:00 | 124 |  |  |  | 22d | 0d | 高级编码 | 8h | 1,000 |  |
| 126 | 1.5.6 | **建立开发基线** |  | 1.75d | 2023-07-11 13:00 | 2023-07-13 10:00 |  | 2008-09-12 14:36 | 2009-02-25 14:36 | 118d? | 22d |  |  | 26h | 3,250 | 2,000 |
| 127 | 1.5.6.1 | 开发基线建立申请,填写《基线建立申请》 |  | 0.5d | 2023-07-11 13:00 | 2023-07-11 17:00 | 125SS | 2008-09-15 14:36 | 2008-09-16 14:36 | 1d? | 22d | 0d | 配置管理 | 8h | 1,000 | 2,000 |
| 128 | 1.5.6.2 | QA和CM对配置库进行功能审计和物理审计 |  | 0.5d | 2023-07-12 08:00 | 2023-07-12 12:00 | 127 |  |  |  | 22d | 0d | 配置管理; 质量保证 | 8h | 1,000 |  |
| 129 | 1.5.6.3 | 配置管理在配置库中建立开发基线 |  | 0.5d | 2023-07-12 13:00 | 2023-07-12 17:00 | 128 | 2008-09-16 14:36 | 2008-09-17 14:36 | 1d? | 22d | 0d | 配置管理 | 8h | 1,000 |  |
| 130 | 1.5.6.4 | 填写开发基线《发布报告》 |  | 0.25d | 2023-07-13 08:00 | 2023-07-13 10:00 | 129 | 2008-09-17 14:36 | 2008-09-17 14:36 | 0d | 22d | 0d | 配置管理 | 2h | 250 |  |
| 131 | 1.5.7 | **实现阶段里程碑** |  | 0.75d | 2023-07-13 10:00 | 2023-07-13 17:00 |  | 2009-02-25 14:36 | 2009-03-02 14:36 | 3d? | 22d |  |  | 24h | 3,000 | 1,200 |
| 132 | 1.5.7.1 | 召开实现里程碑评审会议,填写《编码里程碑状态报告》 | milestone | 0.5d | 2023-07-13 10:00 | 2023-07-13 15:00 | 130 | 2009-02-25 14:36 | 2009-02-26 14:36 | 1d? | 22d | 0d | 项目经理; 设计; 编码; 测试 | 16h | 2,000 | 400 |
| 133 | 1.5.7.2 | 项目经理对项目计划进行阶段性调整，完善《需求跟踪矩阵》 |  | 0.25d | 2023-07-13 15:00 | 2023-07-13 17:00 | 132 | 2009-02-27 14:36 | 2009-03-02 14:36 | 1d? | 22d |  | 项目经理 | 8h | 1,000 | 400 |
| 135 | 1.6 | **系统测试** |  | 13d | 2023-07-07 13:00 | 2023-07-26 12:00 |  | 2009-03-04 14:36 | 2009-04-13 09:36 | 27.5d? | 0d |  |  | 232h | 29,000 | 16,700 |
| 136 | 1.6.1 | **系统测试** |  | 10.5d | 2023-07-07 13:00 | 2023-07-21 17:00 |  | 2009-03-04 14:36 | 2009-04-10 09:36 | 26.5d | 0d |  |  | 136h | 17,000 | 10,750 |
| 137 | 1.6.1.1 | 测试前进行测试用例自评 |  | 1d | 2023-07-07 13:00 | 2023-07-10 12:00 | 120 |  |  |  | 0d |  | 测试 | 16h | 2,000 |  |
| 138 | 1.6.1.2 | 搭建系统测试环境 |  | 1d | 2023-07-10 13:00 | 2023-07-11 12:00 | 137 | 2009-03-05 14:36 | 2009-03-06 14:36 | 1d | 0d |  | 测试 | 16h | 2,000 |  |
| 139 | 1.6.1.3 | 执行系统测试 |  | 5d | 2023-07-11 13:00 | 2023-07-18 12:00 | 138 | 2009-03-06 14:36 | 2009-03-20 14:36 | 10d | 0d |  | 测试 | 40h | 5,000 |  |
| 140 | 1.6.1.4 | 执行回归测试 |  | 2d | 2023-07-18 13:00 | 2023-07-20 12:00 | 139 |  |  |  | 0d |  | 测试 | 32h | 4,000 |  |
| 141 | 1.6.1.5 | 记录测试中发现的BUG并进行修改 |  | 1d | 2023-07-20 13:00 | 2023-07-21 12:00 | 140 | 2009-03-23 09:36 | 2009-04-02 09:36 | 8d | 0d |  | 编码 | 16h | 2,000 |  |
| 142 | 1.6.1.6 | 统计分析测试数据编写<系统测试报告> |  | 0.5d | 2023-07-21 13:00 | 2023-07-21 17:00 | 141 |  |  |  | 0d |  | 测试 | 16h | 2,000 |  |
| 143 | 1.6.2 | **建立测试基线** |  | 2d | 2023-07-24 08:00 | 2023-07-25 17:00 |  | 2009-03-02 14:36 | 2009-03-04 14:36 | 2d? | 0d |  |  | 64h | 8,000 | 2,000 |
| 144 | 1.6.2.1 | 测试基线建立申请,填写《基线建立申请》 |  | 0.5d | 2023-07-24 08:00 | 2023-07-24 12:00 | 142 | 2009-03-02 14:36 | 2009-03-03 14:36 | 1d? | 0d |  | 配置管理 | 16h | 2,000 | 2,000 |
| 145 | 1.6.2.2 | QA和CM对配置库进行功能审计和物理审计 |  | 0.5d | 2023-07-24 13:00 | 2023-07-24 17:00 | 144 |  |  |  | 0d |  | 配置管理; 质量保证 | 16h | 2,000 |  |
| 146 | 1.6.2.3 | 配置管理在配置库中建立测试基线 |  | 0.5d | 2023-07-25 08:00 | 2023-07-25 12:00 | 145 | 2009-03-03 14:36 | 2009-03-04 14:36 | 1d? | 0d |  | 配置管理 | 16h | 2,000 |  |
| 147 | 1.6.2.4 | 填写测试基线《发布报告》 |  | 0.5d | 2023-07-25 13:00 | 2023-07-25 17:00 | 146 | 2009-03-04 14:36 | 2009-03-04 14:36 | 0d | 0d |  | 配置管理 | 16h | 2,000 |  |

| ID | WBS | Task | Duration | Start | Finish | Predecessors | Baseline start | Baseline finish | Baseline duration | Total slack | Free slack | Resources | Work | Cost | Baseline cost |
| --- | --- | --- | --- | --- | --- | --- | --- | --- | --- | --- | --- | --- | --- | --- | --- |
| 148 | 1.6.3 | **测试阶段里程碑** | 0.5d | 2023-07-26 08:00 | 2023-07-26 12:00 |  | 2009-04-10 09:36 | 2009-04-13 09:36 | 1d? | 0d |  |  | 32h | 4,000 | 1,200 |
| 149 | 1.6.3.1 | 召开测试里程碑评审会议,填写《编码里程碑状态报告》 | 0.25d | 2023-07-26 08:00 | 2023-07-26 10:00 | 147 | 2009-04-10 09:36 | 2009-04-13 09:36 | 1d? | 0d |  | 项目经理; 配置管理主管; 质量保证主管; 测试 | 16h | 2,000 | 400 |
| 150 | 1.6.3.2 | 项目经理对项目计划进行阶段性调整 | 0.25d | 2023-07-26 10:00 | 2023-07-26 12:00 | 149 | 2009-04-10 09:36 | 2009-04-13 09:36 | 1d? | 0d |  | 项目经理 | 16h | 2,000 | 400 |
| 152 | 1.7 | **上线及验收 （产品交付）** | 11.5d | 2023-07-26 13:00 | 2023-08-10 17:00 | 135 |  |  |  | 0d |  |  | 176h | 22,000 |  |
| 153 | 1.7.1 | **试运行** | 3.5d | 2023-07-26 13:00 | 2023-07-31 17:00 |  | 2009-04-13 09:36 | 2009-04-16 09:36 | 3d? | 10d |  |  | 60h | 7,500 | 2,800 |
| 154 | 1.7.1.1 | 制定《系统上线验收计划》提交客户确认 | 0.5d | 2023-07-26 13:00 | 2023-07-26 17:00 | 142 | 2009-04-13 09:36 | 2009-04-14 09:36 | 1d? | 10d | 0d | 项目经理 | 8h | 1,000 | 400 |
| 155 | 1.7.1.2 | 更新完善《产品交接验收单》 | 0.5d | 2023-07-27 08:00 | 2023-07-27 12:00 | 154 | 2009-04-13 09:36 | 2009-04-14 09:36 | 1d? | 10d | 0d | 项目经理 | 8h | 1,000 | 400 |
| 156 | 1.7.1.3 | 更新完善<用户手册> | 0.5d | 2023-07-27 13:00 | 2023-07-27 17:00 | 155 |  |  |  | 10d | 0d | 设计 | 8h | 1,000 |  |
| 157 | 1.7.1.4 | QA检查<用户手册>记录不符合项进行修正 | 0.5d | 2023-07-28 08:00 | 2023-07-28 12:00 | 156 |  |  |  | 10d | 0d | 设计; 质量保证 | 8h | 1,000 |  |
| 158 | 1.7.1.5 | 产品进行打包，编写《产品打包清单》 | 0.5d | 2023-07-28 13:00 | 2023-07-28 17:00 | 157 |  |  |  | 10d | 0d | 项目经理; 需求 | 8h | 1,000 |  |
| 159 | 1.7.1.6 | 配置管理员根据《产品交接验收单》将产品基线中的配置项放入产品库 | 0.5d | 2023-07-31 08:00 | 2023-07-31 12:00 | 158 | 2009-04-14 09:36 | 2009-04-15 09:36 | 1d? | 10d | 0d | 配置管理 | 8h | 1,000 |  |
| 160 | 1.7.1.7 | 系统安装部署,用户确认 | 0.5d | 2023-07-31 13:00 | 2023-07-31 17:00 | 159 | 2009-04-13 09:36 | 2009-04-14 09:36 | 1d? | 10d |  | 项目经理; 设计; 测试 | 12h | 1,500 |  |
| 161 | 1.7.2 | **验收** | 9d | 2023-07-26 13:00 | 2023-08-08 12:00 |  | 2009-04-16 09:36 | 2009-04-17 09:36 | 1d? | 0d |  |  | 68h | 8,500 | 1,200 |
| 162 | 1.7.2.1 | 项目经理向客户提出验收申请，编写《验收计划》 | 0.5d | 2023-07-26 13:00 | 2023-07-26 17:00 | 142 | 2009-04-16 09:36 | 2009-04-17 09:36 | 1d? | 0d |  | 项目经理 | 8h | 1,000 | 400 |
| 163 | 1.7.2.2 | 测试人员与客户共同编写《验收测试用例》 | 0.5d | 2023-07-27 08:00 | 2023-07-27 12:00 | 162 | 2009-04-16 09:36 | 2009-04-16 09:36 | 0d | 0d |  | 项目经理 | 8h | 1,000 |  |
| 164 | 1.7.2.3 | 执行验收测试 | 7d | 2023-07-27 13:00 | 2023-08-07 12:00 | 163 |  |  |  | 0d |  | 测试 | 36h | 4,500 |  |
| 165 | 1.7.2.4 | 记录验收测试BUG,并进行修正至关闭 | 0.5d | 2023-08-07 13:00 | 2023-08-07 17:00 | 164 |  |  |  | 0d |  | 测试; 编码 | 8h | 1,000 |  |
| 166 | 1.7.2.5 | 编写《验收报告》,客户确认 | 0.5d | 2023-08-08 08:00 | 2023-08-08 12:00 | 165 | 2009-04-16 09:36 | 2009-04-16 09:36 | 0d | 0d |  | 项目经理 | 8h | 1,000 |  |
| 167 | 1.7.3 | **建立产品基线** | 2d | 2023-08-08 13:00 | 2023-08-10 12:00 |  | 2009-04-10 09:36 | 2009-04-13 09:36 | 1d? | 0d |  |  | 32h | 4,000 | 2,000 |
| 168 | 1.7.3.1 | 产品基线建立申请,填写《基线建立申请》 | 0.5d | 2023-08-08 13:00 | 2023-08-08 17:00 | 166 | 2009-04-10 09:36 | 2009-04-13 09:36 | 1d? | 0d |  | 配置管理 | 8h | 1,000 |  |
| 169 | 1.7.3.2 | QA和CM对配置库进行功能审计和物理审计 | 0.5d | 2023-08-09 08:00 | 2023-08-09 12:00 | 168 | 2009-04-10 09:36 | 2009-04-13 09:36 | 1d? | 0d |  | 配置管理; 质量保证 | 8h | 1,000 | 2,000 |
| 170 | 1.7.3.3 | 配置管理在配置库中建立产品基线 | 0.5d | 2023-08-09 13:00 | 2023-08-09 17:00 | 169 | 2009-04-10 09:36 | 2009-04-13 09:36 | 1d? | 0d |  | 配置管理 | 8h | 1,000 |  |
| 171 | 1.7.3.4 | 填写产品基线《发布报告》 | 0.5d | 2023-08-10 08:00 | 2023-08-10 12:00 | 170 | 2009-04-10 09:36 | 2009-04-10 09:36 | 0d | 0d |  | 配置管理 | 8h | 1,000 |  |
| 172 | 1.7.4 | **验收里程碑** | 0.5d | 2023-08-10 13:00 | 2023-08-10 17:00 |  | 2009-04-16 09:36 | 2009-04-17 09:36 | 1d? | 0d |  |  | 16h | 2,000 | 800 |
| 173 | 1.7.4.1 | 召开验收里程碑评审会议，填写《验收里程碑状态报告》 | 0.25d | 2023-08-10 13:00 | 2023-08-10 15:00 | 171 | 2009-04-16 09:36 | 2009-04-17 09:36 | 1d? | 0d |  | 项目经理; 需求; 测试; 设计; 质量保证主管; 高级编码 | 12h | 1,500 | 400 |
| 174 | 1.7.4.2 | 必要时对相关计划进行相应调整 | 0.25d | 2023-08-10 15:00 | 2023-08-10 17:00 | 173 | 2009-04-16 09:36 | 2009-04-17 09:36 | 1d? | 0d |  | 项目经理 | 4h | 500 | 400 |

| ID | WBS | Task | Duration | Start | Finish | Predecessors | Baseline start | Baseline finish | Baseline duration | Total slack | Constraint | Resources | Work | Cost | Baseline cost |
| --- | --- | --- | --- | --- | --- | --- | --- | --- | --- | --- | --- | --- | --- | --- | --- |
| 176 | 1.8 | **项目总结** | 2d | 2023-08-11 08:00 | 2023-08-14 17:00 | 172 | 2009-04-17 09:36 | 2009-04-20 09:36 | 1d? | 0d |  |  | 44h | 5,500 | 2,383.33 |
| 177 | 1.8.1 | 编写《项目总结报告》,收集相关经验 | 0.5d | 2023-08-11 08:00 | 2023-08-11 12:00 |  | 2009-04-17 09:36 | 2009-04-20 09:36 | 1d? | 0d |  | 项目经理 | 4h | 500 | 400 |
| 178 | 1.8.2 | 项目总结大会（总结度量、经验以及教训） | 0.5d | 2023-08-11 13:00 | 2023-08-11 17:00 | 177 | 2009-04-17 09:36 | 2009-04-20 09:36 | 1d? | 0d |  | EPG; 编码; 测试; 配置管理; 设计; 项目经理; 需求; 质量保证 | 32h | 4,000 | 283.33 |
| 179 | 1.8.3 | 更新《项目总结报告》 | 0.5d | 2023-08-14 08:00 | 2023-08-14 12:00 | 178 | 2009-04-17 09:36 | 2009-04-20 09:36 | 1d? | 0d |  | 项目经理 | 4h | 500 | 400 |
| 180 | 1.8.4 | EPG将度量数据、优秀案例、经验教训等纳入组织财富库 | 0.5d | 2023-08-14 13:00 | 2023-08-14 17:00 | 179 | 2009-04-17 09:36 | 2009-04-20 09:36 | 1d | 0d |  | EPG | 4h | 500 | 450 |
| 182 | 1.9 | **配置管理** | 181.5d | 2022-07-29 08:00 | 2023-04-10 12:00 |  | 2008-07-22 08:00 | 2009-04-14 12:00 | 190.5d | 90.5d |  |  | 20h | 2,500 | 31,200 |
| 183 | 1.9.1 | 搭建配置库 | 0.5d | 2023-04-10 08:00 | 2023-04-10 12:00 | 3 |  |  |  | 90.5d |  | 配置管理 | 4h | 500 |  |
| 184 | 1.9.2 | 配置管理 1 | 0.5d | 2022-07-29 08:00 | 2022-07-29 12:00 |  |  |  |  | 271.5d | start no earlier than 2022-07-29 08:00 | 配置管理 | 4h | 500 |  |
| 185 | 1.9.3 | 配置管理 2 | 0.5d | 2022-08-31 08:00 | 2022-08-31 12:00 |  |  |  |  | 248.5d | start no earlier than 2022-08-31 08:00 | 配置管理 | 4h | 500 |  |
| 186 | 1.9.4 | 配置管理 3 | 0.5d | 2022-09-30 08:00 | 2022-09-30 12:00 |  |  |  |  | 226.5d | start no earlier than 2022-09-30 08:00 | 配置管理 | 4h | 500 |  |
| 187 | 1.9.5 | 配置管理 4 | 0.5d | 2022-10-28 08:00 | 2022-10-28 12:00 |  |  |  |  | 206.5d | start no earlier than 2022-10-28 08:00 | 配置管理 | 4h | 500 |  |
| 189 | 1.10 | **需求管理** | 41.75d | 2023-05-05 13:00 | 2023-07-04 10:00 |  |  |  |  | 29.75d |  |  | 8h | 1,000 |  |
| 190 | 1.10.1 | 需求跟踪矩阵的维护-需求 | 0.25d | 2023-05-05 13:00 | 2023-05-05 15:00 | 49 |  |  |  | 71.25d |  | 需求 | 2h | 250 |  |
| 191 | 1.10.2 | 需求跟踪矩阵的维护-设计 | 0.25d | 2023-06-07 13:00 | 2023-06-07 15:00 | 70 |  |  |  | 48.25d |  | 设计 | 2h | 250 |  |
| 192 | 1.10.3 | 需求跟踪矩阵的维护-编码 | 0.25d | 2023-07-04 08:00 | 2023-07-04 10:00 | 107 |  |  |  | 29.75d |  | 编码 | 2h | 250 |  |
| 193 | 1.10.4 | 需求跟踪矩阵的维护-测试 | 0.25d | 2023-05-16 08:00 | 2023-05-16 10:00 | 60 |  |  |  | 64.75d |  | 测试 | 2h | 250 |  |
| 194 | 1.11 | **周期性质量保证活动** | 86.5d | 2022-06-30 08:00 | 2022-10-28 12:00 |  | 2008-07-21 08:00 | 2009-04-20 12:00 | 195.5d | 206.5d |  |  | 20h | 2,500 | 32,000 |
| 195 | 1.11.1 | 周期性质量保证活动 1 | 0.5d | 2022-06-30 08:00 | 2022-06-30 12:00 |  |  |  |  | 292.5d | start no earlier than 2022-06-30 08:00 | 质量保证 | 4h | 500 |  |
| 196 | 1.11.2 | 周期性质量保证活动 2 | 0.5d | 2022-07-29 08:00 | 2022-07-29 12:00 |  |  |  |  | 271.5d | start no earlier than 2022-07-29 08:00 | 质量保证 | 4h | 500 |  |
| 197 | 1.11.3 | 周期性质量保证活动 3 | 0.5d | 2022-08-31 08:00 | 2022-08-31 12:00 |  |  |  |  | 248.5d | start no earlier than 2022-08-31 08:00 | 质量保证 | 4h | 500 |  |
| 198 | 1.11.4 | 周期性质量保证活动 4 | 0.5d | 2022-09-30 08:00 | 2022-09-30 12:00 |  |  |  |  | 226.5d | start no earlier than 2022-09-30 08:00 | 质量保证 | 4h | 500 |  |
| 199 | 1.11.5 | 周期性质量保证活动 5 | 0.5d | 2022-10-28 08:00 | 2022-10-28 12:00 |  |  |  |  | 206.5d | start no earlier than 2022-10-28 08:00 | 质量保证 | 4h | 500 |  |
| 200 | 1.12 | **项目周例会跟踪风险和度量** | 90.5d | 2022-07-01 08:00 | 2022-11-04 12:00 |  | 2008-07-21 08:00 | 2009-04-20 12:00 | 195.5d | 201.5d |  |  | 40h | 5,000 | 125,000 |
| 201 | 1.12.1 | 项目周例会跟踪风险和度量 1 | 0.5d | 2022-07-01 08:00 | 2022-07-01 12:00 |  |  |  |  | 291.5d | start no earlier than 2022-07-01 08:00 | 项目组成员 | 4h | 500 |  |
| 202 | 1.12.2 | 项目周例会跟踪风险和度量 2 | 0.5d | 2022-07-15 08:00 | 2022-07-15 12:00 |  |  |  |  | 281.5d | start no earlier than 2022-07-15 08:00 | 项目组成员 | 4h | 500 |  |
| 203 | 1.12.3 | 项目周例会跟踪风险和度量 3 | 0.5d | 2022-07-29 08:00 | 2022-07-29 12:00 |  |  |  |  | 271.5d | start no earlier than 2022-07-29 08:00 | 项目组成员 | 4h | 500 |  |
| 204 | 1.12.4 | 项目周例会跟踪风险和度量 4 | 0.5d | 2022-08-12 08:00 | 2022-08-12 12:00 |  |  |  |  | 261.5d | start no earlier than 2022-08-12 08:00 | 项目组成员 | 4h | 500 |  |
| 205 | 1.12.5 | 项目周例会跟踪风险和度量 5 | 0.5d | 2022-08-26 08:00 | 2022-08-26 12:00 |  |  |  |  | 251.5d | start no earlier than 2022-08-26 08:00 | 项目组成员 | 4h | 500 |  |
| 206 | 1.12.6 | 项目周例会跟踪风险和度量 6 | 0.5d | 2022-09-09 08:00 | 2022-09-09 12:00 |  |  |  |  | 241.5d | start no earlier than 2022-09-09 08:00 | 项目组成员 | 4h | 500 |  |
| 207 | 1.12.7 | 项目周例会跟踪风险和度量 7 | 0.5d | 2022-09-23 08:00 | 2022-09-23 12:00 |  |  |  |  | 231.5d | start no earlier than 2022-09-23 08:00 | 项目组成员 | 4h | 500 |  |
| 208 | 1.12.8 | 项目周例会跟踪风险和度量 8 | 0.5d | 2022-10-07 08:00 | 2022-10-07 12:00 |  |  |  |  | 221.5d | start no earlier than 2022-10-07 08:00 | 项目组成员 | 4h | 500 |  |
| 209 | 1.12.9 | 项目周例会跟踪风险和度量 9 | 0.5d | 2022-10-21 08:00 | 2022-10-21 12:00 |  |  |  |  | 211.5d | start no earlier than 2022-10-21 08:00 | 项目组成员 | 4h | 500 |  |
| 210 | 1.12.10 | 项目周例会跟踪风险和度量 10 | 0.5d | 2022-11-04 08:00 | 2022-11-04 12:00 |  |  |  |  | 201.5d | start no earlier than 2022-11-04 08:00 | 项目组成员 | 4h | 500 |  |
