Schedule from OmniPlan, 2022-04-08 to 2023-06-19.
Project start 2019-06-03

## Resources

| Resource | Group | Rate |
| --- | --- | --- |
| 项目经理 | staff | 125 |
| 编码 | staff | 125 |
| EPG | staff | 125 |
| 质量保证 | staff | 125 |
| 配置管理 | staff | 125 |
| 需求 | staff | 125 |
| 测试 | staff | 125 |
| 设计 | staff | 125 |
| 采购 | staff | 125 |
| 部门经理 | staff | 125 |
| 培训 | staff | 125 |
| 客户代表 | staff | 125 |
| 项目组成员 | staff | 125 |
| 质量保证主管 | staff | 125 |
| 配置管理主管 | staff | 125 |
| 高级编码 | staff | 125 |
| 高级设计 | staff | 125 |
| 高级测试 | staff | 125 |
| 高级项目经理 | staff | 125 |
| 高级需求分析 | staff | 125 |
| 高级架构师 | staff | 125 |
| 架构师 | staff | 125 |

## Schedule

| ID | WBS | Task | Start | Predecessors | Constraint | Resources | Work |
| --- | --- | --- | --- | --- | --- | --- | --- |
| 1 | 1 | **赛事运营支持系统** |  |  |  |  |  |
| 2 | 1.1 | **项目立项** |  |  |  |  |  |
| 3 | 1.1.1 | 了解项目情况,获得初步需求 | 2022-04-08 |  | start locked to 2022-04-08 | 高级设计; 项目经理; 测试; 高级编码 | 96h |
| 4 | 1.1.2 | 项目初步估算 | 2022-04-26 | 3 | start locked to 2022-04-26 | 高级编码; 高级测试; 高级设计; 项目经理 | 8h |
| 5 | 1.1.3 | 项目组织架构，章程制定、资源、职责，干系人RACI整理 | 2022-04-26 | 4 | start locked to 2022-04-26 | 项目经理 | 2h |
| 6 | 1.1.4 | 召开项目立项会议 | 2022-04-26 | 5 | start locked to 2022-04-26 | 高级编码; 设计; 需求; 测试; 配置管理; 项目经理 | 13.5h |
| 7 | 1.1.5 | 编写《项目立项报告》 | 2022-04-18 |  | start locked to 2022-04-18 | 项目经理 | 4h |
| 8 | 1.2 | **项目计划** |  |  |  |  |  |
| 9 | 1.2.1 | **项目估算** |  |  |  |  |  |
| 10 | 1.2.1.1 | 确定软件生存周期,初步制定QA,CM计划 | 2022-04-18 | 7 | start locked to 2022-04-18 | 项目经理; 配置管理; 质量保证 | 40h |
| 11 | 1.2.1.2 | EPG指导项目经理编写《项目定义过程》 | 2022-04-20 | 10 | start locked to 2022-04-20 | 项目经理; EPG | 8h |
| 12 | 1.2.1.3 | 根据初步，进行WBS分解 | 2022-04-21 | 11 | start locked to 2022-04-21 | 高级编码; 设计; 项目经理 | 24h |
| 13 | 1.2.1.4 | 估算项目的规模,工作量,成本,形成进度计划<项目估算>和项目预算 | 2022-04-22 | 12 | start locked to 2022-04-22 | 高级编码; 设计; 项目经理 | 24h |
| 14 | 1.2.1.5 | 依据<风险检查表>进行风险识别,初步形成计划 | 2022-04-25 | 13 | start locked to 2022-04-25 | 项目经理 | 4h |
| 15 | 1.2.2 | **项目计划** |  |  |  |  |  |
| 16 | 1.2.2.1 | **项目经理制定项目计划** |  |  |  |  |  |
| 17 | 1.2.2.1.1 | 完善项目进度计划 | 2022-04-26 | 14 | start locked to 2022-04-26 | 项目经理 | 8h |
| 18 | 1.2.2.1.2 | 编写《项目计划书》 | 2022-04-27 | 17 | start locked to 2022-04-27 | 项目经理 | 33.25h |
| 19 | 1.2.2.1.3 | 编写<度量计划> | 2022-05-03 | 18 | start locked to 2022-05-03 | 项目经理 | 7.5h |
| 20 | 1.2.2.2 | **制定从属计划** |  |  |  |  |  |
| 21 | 1.2.2.2.1 | 编写需求调研计划 | 2022-05-05 |  | start locked to 2022-05-05 | 需求 | 8h |
| 22 | 1.2.2.2.2 | 完善质量保证计划(QA) | 2022-05-05 |  | start locked to 2022-05-05 | 质量保证主管 | 8h |
| 23 | 1.2.2.2.3 | 完善配置管理计划(CM) | 2022-05-05 |  | start locked to 2022-05-05 | 配置管理 | 8h |
| 24 | 1.2.2.2.4 | 编写测试计划 | 2022-05-05 |  | start locked to 2022-05-05 | 高级测试 | 8h |
| 25 | 1.2.2.2.5 | 编写<培训计划> | 2022-05-05 |  | start locked to 2022-05-05 | 培训 | 8h |
| 26 | 1.2.2.3 | 项目计划书,从属计划及项目定义过程进行评审 | 2022-05-04 | 16 | start locked to 2022-05-04 | 高级编码; 项目经理; 需求; 设计; 配置管理; 测试 | 48h |
| 27 | 1.2.2.4 | 评审中发现的缺陷进行修正 | 2022-05-05 | 26 | start locked to 2022-05-05 | 高级编码; 需求; 设计; 测试; 配置管理; EPG; 项目经理 | 56h |
| 28 | 1.2.2.5 | 项目计划书的评审与发布 | 2022-05-06 | 27 | start locked to 2022-05-06 | 项目经理 | 8h |
| 29 | 1.2.2.6 | 调研计划发给客户 | 2022-05-09 | 28 | start locked to 2022-05-09 | 项目经理 | 8h |

Notes:
- 5: 产出<项目章程>
- 6: 产出<会议记录>

| ID | WBS | Task | Start | Predecessors | Constraint | Resources | Work |
| --- | --- | --- | --- | --- | --- | --- | --- |
| 30 | 1.2.3 | **建立计划基线** |  | 20 |  |  |  |
| 31 | 1.2.3.1 | 计划基线建立申请,填写《基线建立申请》 | 2022-05-10 | 29 | start locked to 2022-05-10 | 配置管理 | 4h |
| 32 | 1.2.3.2 | QA和CM对配置库进行功能审计和物理审计 | 2022-05-10 | 31 | start locked to 2022-05-10 | 质量保证; 配置管理 | 8h |
| 33 | 1.2.3.3 | 配置管理在配置库中建立计划基线 | 2022-05-11 | 32 | start locked to 2022-05-11 | 配置管理 | 4h |
| 34 | 1.2.3.4 | 填写计划基线《发布报告》 | 2022-05-11 | 33 | start locked to 2022-05-11 | 配置管理 | 4h |
| 35 | 1.2.4 | **召开项目培训** |  |  |  |  |  |
| 36 | 1.2.4.1 | 依据《项目培训计划》组织培训 | 2022-05-06 | 25 | start locked to 2022-05-06 | 培训 | 4h |
| 37 | 1.2.4.2 | 编写培训反馈记录 | 2022-05-06 | 36 | start locked to 2022-05-06 | 培训 | 8h |
| 38 | 1.2.5 | **项目计划里程碑** |  |  |  |  |  |
| 39 | 1.2.5.1 | 开策划里程碑会议,填写《策划里程碑状态报告》 | 2022-05-12 | 30 | start locked to 2022-05-12 | 高级编码; 项目经理; 需求; 设计; 测试; 配置管理 | 12h |
| 40 | 1.2.5.2 | 项目经理根据里程碑数据进行阶段性调整 | 2022-05-12 | 39 | start locked to 2022-05-12 | 项目经理 | 2h |
| 41 | 1.3 | **需求开发** |  |  |  |  |  |
| 42 | 1.3.1 | **需求调研** |  |  |  |  |  |
| 43 | 1.3.1.1 | 按照《需求调研计划》进行调研，形成调研记录 | 2022-05-13 | 38 | start locked to 2022-05-13 | 需求 | 16h |
| 44 | 1.3.1.2 | 编写《需求跟踪矩阵》填写原始需求 | 2022-05-17 | 43 | start locked to 2022-05-17 | 需求 | 4h |
| 45 | 1.3.2 | **需求分析** |  | 42 |  |  |  |
| 46 | 1.3.2.1 | 分析需求,编写《用户需求说明书》 | 2022-05-17 |  | start locked to 2022-05-17 | 需求 | 40h |
| 47 | 1.3.2.2 | 评审<用户需求说明书>,记录并修改缺陷 | 2022-05-24 | 46 | start locked to 2022-05-24 | 高级编码; 项目经理; 需求; 设计; 测试; 配置管理 | 24h |
| 48 | 1.3.2.3 | QA检查<用户需求说明书>并记录不符合项并修改 | 2022-05-24 | 47 | start locked to 2022-05-24 | 配置管理; 质量保证 | 8h |
| 49 | 1.3.2.4 | <用户需求说明书>提交客户确认 | 2022-05-25 | 48 | start locked to 2022-05-25 | 项目经理; 需求 | 8h |
| 50 | 1.3.2.5 | 编写《产品需求说明书》 | 2022-05-25 | 49 | start locked to 2022-05-25 | 需求 | 48h |
| 51 | 1.3.2.6 | 评审<产品需求说明书>,记录并修改缺陷 | 2022-06-02 | 50 | start locked to 2022-06-02 | 高级编码; 项目经理; 需求; 设计; 测试; 配置管理 | 24h |
| 52 | 1.3.2.7 | 完善<项目估算>和《需求跟踪矩阵》 | 2022-06-03 | 51 | start locked to 2022-06-03 | 高级编码; 设计; 项目经理 | 24h |
| 53 | 1.3.2.8 | 完善编写《测试计划》 | 2022-06-06 | 52 | start locked to 2022-06-06 | 测试 | 16h |
| 54 | 1.3.2.9 | 评审《测试计划》并发布 | 2022-06-08 | 53 | start locked to 2022-06-08 | 测试; 项目经理 | 16h |
| 55 | 1.3.2.10 | 完善<项目进度计划>，完善<项目计划书> | 2022-06-09 | 54 | start locked to 2022-06-09 | 项目经理 | 8h |
| 56 | 1.3.2.11 | 依据《产品需求说明书》编写《系统测试用例》 | 2022-06-09 |  | start locked to 2022-06-09 | 需求; 测试; 项目经理 | 48h |
| 57 | 1.3.2.12 | QA检查《产品需求说明书》和《系统测试用例》 | 2022-06-15 | 56 | start locked to 2022-06-15 | 质量保证; 需求; 测试 | 24h |
| 58 | 1.3.2.13 | 评审<系统测试用例>记录并修改缺陷 | 2022-06-16 | 57 | start locked to 2022-06-16 | 高级编码; 项目经理; 需求; 设计; 测试; 配置管理 | 48h |

| ID | WBS | Task | Start | Predecessors | Constraint | Resources | Work |
| --- | --- | --- | --- | --- | --- | --- | --- |
| 59 | 1.3.3 | **建立需求基线** |  | 58 |  |  |  |
| 60 | 1.3.3.1 | 需求基线建立申请,填写《基线建立申请》 | 2022-06-19 |  | start locked to 2022-06-19 | 配置管理 | 4h |
| 61 | 1.3.3.2 | QA和CM对配置库进行功能和物理审计 | 2022-06-20 | 60 | start locked to 2022-06-20 | 质量保证; 配置管理 | 8h |
| 62 | 1.3.3.3 | 配置管理在配置库中建立需求基线 | 2022-06-22 | 61 | start locked to 2022-06-22 | 配置管理 | 4h |
| 63 | 1.3.3.4 | 填写需求基线《发布报告》 | 2022-06-22 | 62 | start locked to 2022-06-22 | 配置管理 | 4h |
| 64 | 1.3.4 | **需求里程碑** |  | 59 |  |  |  |
| 65 | 1.3.4.1 | 需求里程碑会议,填写《需求里程碑状态报告》 | 2022-06-23 | 63 | start locked to 2022-06-23 | 项目经理; 需求; 测试; 配置管理 | 8h |
| 66 | 1.3.4.2 | 项目经理对项目计划进行阶段性调整，完善《需求跟踪矩阵》 | 2022-06-23 | 65 | start locked to 2022-06-23 | 项目经理 | 2h |
| 67 | 1.4 | **系统设计** |  | 41 |  |  |  |
| 68 | 1.4.1 | **决策分析** |  |  |  |  |  |
| 69 | 1.4.1.1 | 完善技术方案,必要情况进行决策分析形成《决策分析报告》 | 2022-06-18 |  | start locked to 2022-06-18 | 高级编码; 设计; 项目经理; 需求 | 32h |
| 70 | 1.4.1.2 | 技术解决方案制定，购买复用分析 | 2022-06-23 | 69 | start locked to 2022-06-23 | 架构师 | 8h |
| 71 | 1.4.2 | **系统概要设计** |  | 68 |  |  |  |
| 72 | 1.4.2.1 | 进行总体设计,编写《概要设计书》 | 2022-06-25 | 70 | start locked to 2022-06-25 | 架构师 | 40h |
| 73 | 1.4.2.2 | 评审<概要设计>,记录缺陷并修正 | 2022-07-04 | 72 | start locked to 2022-07-04 | 项目经理; 需求; 设计; 架构师 | 32h |
| 74 | 1.4.2.3 | 数据库初步设计 | 2022-06-24 |  | start locked to 2022-06-24 | 架构师 | 8h |
| 75 | 1.4.3 | **系统详细设计** |  | 73 |  |  |  |
| 76 | 1.4.3.1 | 依据《概要设计说明书》编写《详细设计说明书》 | 2022-07-05 |  | start locked to 2022-07-05 | 架构师 | 40h |
| 77 | 1.4.3.2 | 评审<详细设计>,记录缺陷并修正 | 2022-07-12 | 76 | start locked to 2022-07-12 | 项目经理; 设计; 需求; 架构师; 编码 | 40h |
| 78 | 1.4.3.3 | QA检查<详细设计>记录不符合项并修正 | 2022-07-13 | 77 | start locked to 2022-07-13 | 设计; 编码 | 16h |
| 79 | 1.4.3.4 | 完善《需求跟踪矩阵》 | 2022-07-05 |  | start locked to 2022-07-05 | 设计 | 8h |
| 80 | 1.4.3.5 | 依据《详细设计说明书》编制《单元测试计划》 | 2022-07-16 |  | start locked to 2022-07-16 | 设计; 编码 | 16h |
| 81 | 1.4.3.6 | 依据《详细设计说明书》《单元测试计划》编制《单元测试用例》 | 2022-07-02 |  | start locked to 2022-07-02 | 编码; 设计 | 16h |
| 82 | 1.4.4 | 编写<交付件一览表>初稿 | 2022-07-20 |  | start locked to 2022-07-20 | 设计 | 8h |
| 83 | 1.4.5 | 编写<用户操作手册>初稿 | 2022-07-21 | 82 | start locked to 2022-07-21 | 设计 | 16h |
| 84 | 1.4.6 | 编写<接口列表> | 2022-07-23 | 83 | start locked to 2022-07-23 | 设计 | 4h |
| 85 | 1.4.7 | 编写<接口定义书> | 2022-07-25 | 84 | start locked to 2022-07-25 | 项目经理; 设计 | 16h |
| 86 | 1.4.8 | 编写<产品集成计划> | 2022-07-26 | 85 | start locked to 2022-07-26 | 项目经理; 设计 | 16h |

| ID | WBS | Task | Duration | Start | Predecessors | Constraint | Resources | Work |
| --- | --- | --- | --- | --- | --- | --- | --- | --- |
| 87 | 1.4.9 | **建立设计基线** |  |  |  |  |  |  |
| 88 | 1.4.9.1 | 设计基线建立申请,填写《基线建立申请》 |  | 2022-07-20 | 75 | start locked to 2022-07-20 | 配置管理 | 4h |
| 89 | 1.4.9.2 | QA和CM对配置库进行功能审计 |  | 2022-07-20 | 88 | start locked to 2022-07-20 | 质量保证; 配置管理 | 8h |
| 90 | 1.4.9.3 | 配置管理在配置库中建立设计基线 |  | 2022-07-21 | 89 | start locked to 2022-07-21 | 配置管理 | 4h |
| 91 | 1.4.9.4 | 填写设计基线《发布报告》 |  | 2022-07-21 | 90 | start locked to 2022-07-21 | 配置管理 | 4h |
| 92 | 1.4.10 | **设计里程碑** |  |  |  |  |  |  |
| 93 | 1.4.10.1 | 召开设计里程碑评审会议,填写《设计里程碑状态报告》 |  | 2022-07-22 | 91 | start locked to 2022-07-22 | 高级编码; 项目经理; 配置管理; 质量保证; 设计; 需求; 测试 | 14h |
| 94 | 1.4.10.2 | 项目经理对项目计划进行阶段性调整，完善《需求跟踪矩阵》 |  | 2022-07-22 | 93 | start locked to 2022-07-22 | 项目经理 | 2h |
| 95 | 1.5 | **系统编码实现** |  |  |  |  |  |  |
| 96 | 1.5.1 | **编码** |  |  |  |  |  |  |
| 97 | 1.5.1.1 | 认证登录&个人中心 | 5d | 2022-07-14 | 78 | start locked to 2022-07-14 | 高级编码; 架构师 | 80h |
| 98 | 1.5.1.2 | 账号管理&裁判管理 | 5d | 2022-07-21 | 97 | start locked to 2022-07-21 | 高级编码; 编码 | 80h |
| 99 | 1.5.1.3 | 赛事管理&排班管理 | 5d | 2022-07-28 | 98 | start locked to 2022-07-28 | 编码 | 40h |
| 100 | 1.5.1.4 | 消息通知&公告管理 |  | 2022-08-04 | 99 | start locked to 2022-08-04 | 编码; 高级编码 | 42h |
| 101 | 1.5.1.5 | 排班统计 |  | 2022-08-09 | 100 | start locked to 2022-08-09 | 高级编码; 编码 | 79.5h |
| 102 | 1.5.1.6 | 选手管理&系统配置管理 |  | 2022-08-16 | 101 | start locked to 2022-08-16 | 高级编码; 编码 | 40h |
| 103 | 1.5.2 | **代码审查（编码期间完善，日期为截止日期）** |  |  |  |  |  |  |
| 104 | 1.5.2.1 | 完善<产品集成计划>（编码期间完善） |  | 2022-09-05 | 102 | start locked to 2022-09-05 | 高级编码 | 8h |
| 105 | 1.5.2.2 | 完善<单元测试计划>（编码期间完善） |  | 2022-09-06 | 104 | start locked to 2022-09-06 | 高级编码 | 8h |
| 106 | 1.5.2.3 | 核心代码交叉走查（编码期间完善） |  | 2022-09-07 | 105 | start locked to 2022-09-07 | 高级编码 | 4h |
| 107 | 1.5.2.4 | 完善单元测试用例（编码期间完善） |  | 2022-09-08 |  | start locked to 2022-09-08 | 高级编码 | 8h |
| 108 | 1.5.3 | **编写单元测试用例（编码期间完善，日期为截止日期）** |  |  |  |  |  |  |
| 109 | 1.5.3.1 | 评审＜单元测试用例＞，记录缺陷并修正 |  | 2022-09-09 | 107 | start locked to 2022-09-09 | 高级编码 | 8h |
| 110 | 1.5.3.2 | QA检查＜单元测试用例＞记录不符合项并修正 |  | 2022-09-12 | 109 | start locked to 2022-09-12 | 高级编码 | 8h |

| ID | WBS | Task | Type | Start | Predecessors | Constraint | Resources | Work |
| --- | --- | --- | --- | --- | --- | --- | --- | --- |
| 111 | 1.5.4 | **执行单元测试** |  |  |  |  |  |  |
| 112 | 1.5.4.1 | 依据《单元测试用例》执行单元测试 |  | 2022-09-05 | 96 | start locked to 2022-09-05 | 高级编码 | 40.25h |
| 113 | 1.5.4.2 | 单元测试执行过程中发现的缺陷记录《单元测试BUG记录》 |  | 2022-09-12 | 112 | start locked to 2022-09-12 | 高级编码 | 8h |
| 114 | 1.5.4.3 | 编写《单元测试报告》 |  | 2022-09-13 | 113 | start locked to 2022-09-13 | 高级编码 | 8h |
| 115 | 1.5.4.4 | QA检查《单元测试报告》和《单元测试BUG记录》 |  | 2022-09-14 | 114 | start locked to 2022-09-14 | 高级编码; 质量保证 | 8h |
| 116 | 1.5.4.5 | 完善<接口定义书> |  | 2022-09-15 | 115 | start locked to 2022-09-15 | 项目经理; 设计 | 6h |
| 117 | 1.5.4.6 | 接口进行评审 |  | 2022-09-15 | 116 | start locked to 2022-09-15 | 项目经理; 设计 | 8h |
| 118 | 1.5.5 | **产品集成** |  |  |  |  |  |  |
| 119 | 1.5.5.1 | 搭建集成环境 |  | 2022-09-15 | 117 | start locked to 2022-09-15 | 高级编码 | 8h |
| 120 | 1.5.5.2 | 依据<产品集成检查列表>,<接口列表>进行检查 |  | 2022-09-19 | 119 | start locked to 2022-09-19 | 高级编码 | 8h |
| 121 | 1.5.5.3 | 进行产品集成,模块集成过程中编写<产品集成模块核查报告> |  | 2022-09-20 | 120 | start locked to 2022-09-20 | 高级编码 | 8h |
| 122 | 1.5.5.4 | 准备完毕进行产品集成，进行集成测试 |  | 2022-09-21 | 121 | start locked to 2022-09-21 | 高级编码 | 8h |
| 123 | 1.5.5.5 | 问题修复处理 |  | 2022-09-22 | 122 | start locked to 2022-09-22 | 高级编码 | 7.75h |
| 124 | 1.5.5.6 | 编写《产品集成阶段报告》 |  | 2022-09-23 | 123 | start locked to 2022-09-23 | 高级编码 | 7.75h |
| 125 | 1.5.6 | **建立开发基线** |  |  |  |  |  |  |
| 126 | 1.5.6.1 | 开发基线建立申请,填写《基线建立申请》 |  | 2022-09-26 | 124SS | start locked to 2022-09-26 | 配置管理 | 8h |
| 127 | 1.5.6.2 | QA和CM对配置库进行功能审计和物理审计 |  | 2022-09-27 | 126 | start locked to 2022-09-27 | 质量保证; 配置管理 | 8h |
| 128 | 1.5.6.3 | 配置管理在配置库中建立开发基线 |  | 2022-09-27 | 127 | start locked to 2022-09-27 | 配置管理 | 8h |
| 129 | 1.5.6.4 | 填写开发基线《发布报告》 |  | 2022-09-28 | 128 | start locked to 2022-09-28 | 配置管理 | 2h |
| 130 | 1.5.7 | **实现阶段里程碑** |  |  |  |  |  |  |
| 131 | 1.5.7.1 | 召开实现里程碑评审会议,填写《编码里程碑状态报告》 | milestone | 2022-09-28 | 129 | start locked to 2022-09-28 | 项目经理; 设计; 编码; 测试 |  |
| 132 | 1.5.7.2 | 项目经理对项目计划进行阶段性调整，完善《需求跟踪矩阵》 |  | 2022-09-29 | 131 | start locked to 2022-09-29 | 项目经理 | 8h |
| 133 | 1.6 | **系统测试** |  |  |  |  |  |  |
| 134 | 1.6.1 | **系统测试** |  |  |  |  |  |  |
| 135 | 1.6.1.1 | 测试前进行测试用例自评 |  | 2022-09-12 |  | start locked to 2022-09-12 | 测试 | 8h |
| 136 | 1.6.1.2 | 搭建系统测试环境 |  | 2022-09-13 | 135 | start locked to 2022-09-13 | 测试 | 16h |
| 137 | 1.6.1.3 | 执行系统测试 |  | 2022-09-17 | 136 | start locked to 2022-09-17 | 测试 | 52h |
| 138 | 1.6.1.4 | 执行回归测试 |  | 2022-09-27 | 137 | start locked to 2022-09-27 | 测试 | 32h |
| 139 | 1.6.1.5 | 记录测试中发现的BUG并进行修改 |  | 2022-10-03 | 138 | start locked to 2022-10-03 | 编码 | 16h |
| 140 | 1.6.1.6 | 统计分析测试数据编写<系统测试报告> |  | 2022-10-05 | 139 | start locked to 2022-10-05 | 测试 | 16h |

| ID | WBS | Task | Start | Predecessors | Constraint | Resources | Work |
| --- | --- | --- | --- | --- | --- | --- | --- |
| 141 | 1.6.2 | **建立测试基线** |  |  |  |  |  |
| 142 | 1.6.2.1 | 测试基线建立申请,填写《基线建立申请》 | 2022-10-07 | 140 | start locked to 2022-10-07 | 配置管理 | 15.5h |
| 143 | 1.6.2.2 | QA和CM对配置库进行功能审计和物理审计 | 2022-10-11 | 142 | start locked to 2022-10-11 | 配置管理; 质量保证 | 16h |
| 144 | 1.6.2.3 | 配置管理在配置库中建立测试基线 | 2022-10-12 | 143 | start locked to 2022-10-12 | 配置管理 | 16h |
| 145 | 1.6.2.4 | 填写测试基线《发布报告》 | 2022-10-14 | 144 | start locked to 2022-10-14 | 配置管理 | 16h |
| 146 | 1.6.3 | **测试阶段里程碑** |  |  |  |  |  |
| 147 | 1.6.3.1 | 召开测试里程碑评审会议,填写《编码里程碑状态报告》 | 2022-10-18 | 145 | start locked to 2022-10-18 | 配置管理主管; 质量保证主管; 测试; 项目经理 | 16h |
| 148 | 1.6.3.2 | 项目经理对项目计划进行阶段性调整 | 2022-10-19 | 147 | start locked to 2022-10-19 | 项目经理 | 16h |
| 149 | 1.7 | **上线及验收 （产品交付）** |  | 133 |  |  |  |
| 150 | 1.7.1 | **试运行** |  |  |  |  |  |
| 151 | 1.7.1.1 | 制定《系统上线验收计划》提交客户确认 | 2022-10-09 |  | start locked to 2022-10-09 | 项目经理 | 8h |
| 152 | 1.7.1.2 | 更新完善《产品交接验收单》 | 2022-10-11 | 151 | start locked to 2022-10-11 | 项目经理 | 8h |
| 153 | 1.7.1.3 | 更新完善<用户手册> | 2022-10-12 | 152 | start locked to 2022-10-12 | 设计 | 8h |
| 154 | 1.7.1.4 | QA检查<用户手册>记录不符合项进行修正 | 2022-10-13 | 153 | start locked to 2022-10-13 | 质量保证; 设计 | 8h |
| 155 | 1.7.1.5 | 产品进行打包，编写《产品打包清单》 | 2022-10-13 | 154 | start locked to 2022-10-13 | 项目经理; 需求 | 8h |
| 156 | 1.7.1.6 | 配置管理员根据《产品交接验收单》将产品基线中的配置项放入产品库 | 2022-10-14 | 155 | start locked to 2022-10-14 | 配置管理 | 8h |
| 157 | 1.7.1.7 | 系统安装部署,用户确认 | 2022-10-17 | 156 | start locked to 2022-10-17 | 项目经理; 设计; 测试 | 12h |
| 158 | 1.7.2 | **验收** |  |  |  |  |  |
| 159 | 1.7.2.1 | 项目经理向客户提出验收申请，编写《验收计划》 | 2022-10-04 |  | start locked to 2022-10-04 | 项目经理 | 8h |
| 160 | 1.7.2.2 | 测试人员与客户共同编写《验收测试用例》 | 2022-10-05 | 159 | start locked to 2022-10-05 | 项目经理 | 8h |
| 161 | 1.7.2.3 | 执行验收测试 | 2022-10-06 | 160 | start locked to 2022-10-06 | 测试 | 40h |
| 162 | 1.7.2.4 | 记录验收测试BUG,并进行修正至关闭 | 2022-10-13 | 161 | start locked to 2022-10-13 | 测试; 编码 | 8h |
| 163 | 1.7.2.5 | 编写《验收报告》,客户确认 | 2022-10-13 | 162 | start locked to 2022-10-13 | 项目经理 | 8h |
| 164 | 1.7.3 | **建立产品基线** |  |  |  |  |  |
| 165 | 1.7.3.1 | 产品基线建立申请,填写《基线建立申请》 | 2022-10-14 | 163 | start locked to 2022-10-14 | 配置管理 | 8h |
| 166 | 1.7.3.2 | QA和CM对配置库进行功能审计和物理审计 | 2022-10-17 | 165 | start locked to 2022-10-17 | 配置管理; 质量保证 | 8h |
| 167 | 1.7.3.3 | 配置管理在配置库中建立产品基线 | 2022-10-18 | 166 | start locked to 2022-10-18 | 配置管理 | 8h |
| 168 | 1.7.3.4 | 填写产品基线《发布报告》 | 2022-10-19 | 167 | start locked to 2022-10-19 | 配置管理 | 8h |

| ID | WBS | Task | Start | Predecessors | Constraint | Resources | Work |
| --- | --- | --- | --- | --- | --- | --- | --- |
| 169 | 1.7.4 | **验收里程碑** |  |  |  |  |  |
| 170 | 1.7.4.1 | 召开验收里程碑评审会议，填写《验收里程碑状态报告》 | 2022-10-20 | 168 | start locked to 2022-10-20 | 项目经理; 质量保证主管; 高级编码; 需求; 测试; 设计 | 12h |
| 171 | 1.7.4.2 | 必要时对相关计划进行相应调整 | 2022-10-20 | 170 | start locked to 2022-10-20 | 项目经理 | 4h |
| 172 | 1.8 | **项目总结** |  | 169 |  |  |  |
| 173 | 1.8.1 | 编写《项目总结报告》,收集相关经验 | 2022-10-21 |  | start locked to 2022-10-21 | 项目经理 | 4h |
| 174 | 1.8.2 | 项目总结大会（总结度量、经验以及教训） | 2022-10-21 | 173 | start locked to 2022-10-21 | 编码; 测试; 配置管理; 设计; 项目经理; 需求; 质量保证; EPG | 4h |
| 175 | 1.8.3 | 更新《项目总结报告》 | 2022-10-21 | 174 | start locked to 2022-10-21 | 项目经理 | 4h |
| 176 | 1.8.4 | EPG将度量数据、优秀案例、经验教训等纳入组织财富库 | 2022-10-24 | 175 | start locked to 2022-10-24 | EPG | 4h |
| 177 | 1.9 | **配置管理** |  |  |  |  |  |
| 178 | 1.9.1 | 搭建配置库 | 2022-04-28 |  | start locked to 2022-04-28 | 配置管理 | 4h |
| 179 | 1.9.2 | 配置管理 1 | 2022-05-22 |  | start locked to 2022-05-22 | 配置管理 | 4h |
| 180 | 1.9.3 | 配置管理 2 | 2022-06-24 |  | start locked to 2022-06-24 | 配置管理 | 4h |
| 181 | 1.9.4 | 配置管理 3 | 2022-08-03 |  | start locked to 2022-08-03 | 配置管理 | 4h |
| 182 | 1.9.5 | 配置管理 4 | 2022-08-20 |  | start locked to 2022-08-20 | 配置管理 | 4h |
| 183 | 1.9.6 | 配置管理 5 | 2022-08-31 |  | start locked to 2022-08-31 | 配置管理 | 4h |
| 184 | 1.9.7 | 配置管理 6 | 2022-09-12 |  | start locked to 2022-09-12 | 配置管理 | 4h |
| 185 | 1.10 | **需求管理** |  |  |  |  |  |
| 186 | 1.10.1 | 需求跟踪矩阵的维护-需求 | 2022-06-03 |  | start locked to 2022-06-03 | 需求 | 2h |
| 187 | 1.10.2 | 需求跟踪矩阵的维护-设计 | 2022-07-27 | 67 | start locked to 2022-07-27 | 设计 | 2.5h |
| 188 | 1.10.3 | 需求跟踪矩阵的维护-编码 | 2022-09-08 | 106 | start locked to 2022-09-08 | 编码 | 2h |
| 189 | 1.10.4 | 需求跟踪矩阵的维护-测试 | 2022-09-10 |  | start locked to 2022-09-10 | 测试 | 2h |
| 190 | 1.11 | **周期性质量保证活动** |  |  |  |  |  |
| 191 | 1.11.1 | 周期性质量保证活动 1 | 2022-05-22 |  | start locked to 2022-05-22 | 质量保证 | 4h |
| 192 | 1.11.2 | 周期性质量保证活动 2 | 2022-06-22 |  | start locked to 2022-06-22 | 质量保证 | 4h |
| 193 | 1.11.3 | 周期性质量保证活动 3 | 2022-06-20 |  | start locked to 2022-06-20 | 质量保证 | 4h |
| 194 | 1.11.4 | 周期性质量保证活动 4 | 2022-07-12 |  | start locked to 2022-07-12 | 质量保证 | 4h |
| 195 | 1.11.5 | 周期性质量保证活动 5 | 2022-08-10 |  | start locked to 2022-08-10 | 质量保证 | 4h |
| 196 | 1.11.6 | 周期性质量保证活动 6 | 2022-09-20 |  | start locked to 2022-09-20 | 质量保证 | 4h |

| ID | WBS | Task | Start | Constraint | Resources | Work |
| --- | --- | --- | --- | --- | --- | --- |
| 197 | 1.12 | **项目周例会跟踪风险和度量** |  |  |  |  |
| 198 | 1.12.1 | 项目周例会跟踪风险和度量 1 | 2022-04-25 | start locked to 2022-04-25 | 项目组成员 | 4h |
| 199 | 1.12.2 | 项目周例会跟踪风险和度量 2 | 2022-05-09 | start locked to 2022-05-09 | 项目组成员 | 4h |
| 200 | 1.12.3 | 项目周例会跟踪风险和度量 3 | 2022-05-23 | start locked to 2022-05-23 | 项目组成员 | 4h |
| 201 | 1.12.4 | 项目周例会跟踪风险和度量 4 | 2022-06-06 | start locked to 2022-06-06 | 项目组成员 | 4h |
| 202 | 1.12.5 | 项目周例会跟踪风险和度量 5 | 2022-06-20 | start locked to 2022-06-20 | 项目组成员 | 4h |
| 203 | 1.12.6 | 项目周例会跟踪风险和度量 6 | 2022-07-04 | start locked to 2022-07-04 | 项目组成员 | 4h |
| 204 | 1.12.7 | 项目周例会跟踪风险和度量 7 | 2022-07-18 | start locked to 2022-07-18 | 项目组成员 | 4h |
| 205 | 1.12.8 | 项目周例会跟踪风险和度量 8 | 2022-08-01 | start locked to 2022-08-01 | 项目组成员 | 4h |
| 206 | 1.12.9 | 项目周例会跟踪风险和度量 9 | 2022-08-15 | start locked to 2022-08-15 | 项目组成员 | 4h |
| 207 | 1.12.10 | 项目周例会跟踪风险和度量 10 | 2022-08-29 | start locked to 2022-08-29 | 项目组成员 | 4h |
| 208 | 1.12.11 | 项目周例会跟踪风险和度量 11 | 2022-09-12 | start locked to 2022-09-12 | 项目组成员 | 4h |
| 209 | 1.12.12 | 项目周例会跟踪风险和度量 12 | 2022-05-08 | start locked to 2022-05-08 | 项目组成员 | 4h |
| 210 | 1.12.13 | 项目周例会跟踪风险和度量 13 | 2023-05-22 | start locked to 2023-05-22 | 项目组成员 | 4h |
| 211 | 1.12.14 | 项目周例会跟踪风险和度量 14 | 2023-06-05 | start locked to 2023-06-05 | 项目组成员 | 4h |
| 212 | 1.12.15 | 项目周例会跟踪风险和度量 15 | 2023-06-19 | start locked to 2023-06-19 | 项目组成员 | 4h |
